How a schedule from an exported table changed from version to version. A marks actual dates.

## Version 1 (saved 2026-10-20)

Note of the change: Report track: budget and roadmap skeletons (Codex), unpriced drafts

| Task |
| --- |
| R01: Проверить стартовый пакет и собрать документы для раскрытия параметров проекта |
| R02: Настроить учёт публичных упоминаний и обращений; уточнить карту аудиторий |
| R03: Запросить сметы и утвердить распределение работ между командой и подрядчиками |
| R04: Подготовить поясняющий пакет и программу первой открытой встречи |
| R05: Согласовать бюджет и закупки; зарезервировать исполнителей без начала производства |
| R06: Провести фактическую; экспертную и клиентскую проверку поясняющего пакета |
| R07: Опубликовать поясняющий пакет и приглашение на открытую встречу 17.12 |
| R08: Подготовить спикеров; макеты печати и раскадровку видео |
| R09: Согласовать макеты печати и сценарий перед производством |
| R10: Подтвердить площадку; модератора и технический план первой встречи |
| R11: Напечатать памятки и провести один съёмочный день |
| R12: Повторить приглашение и проверить трансляцию первой встречи |
| R13: Провести открытую встречу 17.12 о параметрах проекта и наследии |
| R14: Завершить черновой монтаж двух роликов с субтитрами |
| R15: Согласовать ответы первой встречи; видео и порядок праздничного дежурства |
| R16: До 30.12 опубликовать согласованные ответы и завершить правки видео; с 31.12 перейти на дежурство |
| R17: Поддерживать только праздничное дежурство и учёт обращений |
| R18: 11.01 сохранить дежурство; 12–15.01 разобрать накопившиеся вопросы |
| R19: Опубликовать согласованные ролики и подготовить обновление сообщений по вопросам аудитории |
| R20: Сопоставить обращения и публичную дискуссию с исходным замером |
| R21: Согласовать обновлённые ответы и приглашение на встречу 18.02 |
| R22: Открыть регистрацию на вторую встречу и выпустить обновлённые материалы |
| R23: Подготовить вторую встречу и передать на согласование пакет завершения кампании |
| R24: Провести вторую открытую встречу 18.02 и передать ответы на проверку 19.02 |
| R25: До 26.02 завершить основной этап и передать сопровождение заказчику |
| R26: Проверить передачу обращений; при необходимости поддерживать ответы только до выхода техники |
| R27: С 09.03 сверить документы подрядчиков и фактические расходы |
| R28: Подготовить итоговую оценку коммуникаций за ноябрь–февраль |
| R29: Согласовать итоговую оценку и закрывающие документы |
| R30: До 31.03 передать окончательные материалы и завершить расчёты |

## Version 2 (saved 2026-10-28)

Note of the change: Merge branch 'stage-1-collection' into main (D-27)

Added:

| Task |
| --- |
| R00: До 01.11 опубликовать стартовое сообщение: что известно о проекте; что ещё не решено; контакт для вопросов; дата следующего обновления |

## Version 3 (saved 2026-10-28)

Note of the change: Budget 9.47M: project Q&A page and two surveys of district residents (D-40); roadmap R31–R33

Added:

| Task |
| --- |
| R31: Провести исходный онлайн-опрос жителей ВАО (400 анкет, квота Преображенского и Соколиной Горы) |
| R32: Открыть страницу проекта с вопросами и ответами вместе с поясняющим пакетом |
| R33: Провести итоговый онлайн-опрос той же методикой |

## Version 4 (saved 2026-10-29)

Note of the change: Report drafts: sections 1, 4, 5 new, 3 rewritten with data (7,624 chars with headings); roadmap R34 announces each dismantling step in advance

Added:

| Task |
| --- |
| R34: Объявлять каждый видимый шаг разборки заранее (до выхода техники): что разбирают, почему, что сохраняется; первые фото с площадки публикует компания |

## Version 5 (saved 2026-10-29)

Note of the change: Team decisions of 29.10: expert council, cats on the site, fallback if the scheme is not published

Added:

| Task |
| --- |
| R35: До 13.11 решить, публикуется ли полная схема по корпусам; если нет, готовить частичную: что снесено, что компания объявила к сохранению, что не решено и когда выйдет полная схема |
| R40: Предложить фонду защиты животных и волонтёрам помощь с оставшимися на площадке кошками; заключить договор с ветеринарной клиникой на отлов, осмотр, стерилизацию и вакцинацию |
| R36: Согласовать мандат экспертного совета и список приглашённых: москвоведы из описи, реставраторы, архитекторы проекта, градозащитники |
| R37: Опубликовать состав, функции и полномочия экспертного совета вместе со схемой |
| R38: Первое заседание экспертного совета до встречи 17.12; протокол и особые мнения через пять рабочих дней |
| R41: Ярмарка пристройства животных с площадки до 20.12: проводят фонд и волонтёры (вузовские волонтёрские центры; набор через ДОБРО.РФ); сбор корма на месте; пристройство по анкете фонда |
| R39: Второе заседание экспертного совета до встречи 18.02; протокол и особые мнения через пять рабочих дней |
| R42: Вторая ярмарка пристройства и последний обход площадки перед выходом техники |

## Version 6 (saved 2026-10-29)

Note of the change: Final report assembled: Word file with appendices А–Ж and a separate campaign calendar

Added:

| Task |
| --- |
| R40: Без публичных заявлений заключить договор с ветеринарной клиникой: отлов оставшихся на площадке кошек; осмотр; стерилизация; вакцинация; передержка до пристройства. Волонтёров; которые кормят животных на площадке; предупредить и договориться о доступе |
| R46: Письмо бывшим арендаторам и культурным пользователям завода: что планируется для культурных площадок и студий; приглашение на встречу 10.12; предложение записать их воспоминания для экспозиции |
| R47: Встреча с бывшими арендаторами 10.12: условия доступа к будущим культурным площадкам и студиям; предложение заказчику дать бывшим арендаторам право первой заявки; запись воспоминаний с согласия участников |
| R43: Согласовать программу двух встреч с жителями района (28.01 Преображенское; 11.02 Соколиная Гора) и разнести приглашения по почтовым ящикам и в районные сообщества |
| R41: Пригласить приют или волонтёрскую организацию пристраивать вылеченных животных; договориться о ярмарке пристройства и о том; что компания открыто называет своё участие |
| R44: Встреча с жителями Преображенского 28.01: что получит район и когда (общественные пространства; культурные площадки; открытая территория завода); как пройдёт стройка и куда обращаться |
| R45: Встреча с жителями Соколиной Горы 11.02: то же; с учётом вопросов 28.01 |
| R42: Ярмарка пристройства вместе с приютом; компания открыто сообщает о своём участии; итог на странице проекта: сколько животных поймано; вылечено и пристроено |

Removed: R40: Предложить фонду защиты животных и волонтёрам помощь с оставшимися на площадке кошками; заключить договор с ветеринарной клиникой на отлов, осмотр, стерилизацию и вакцинацию; R41: Ярмарка пристройства животных с площадки до 20.12: проводят фонд и волонтёры (вузовские волонтёрские центры; набор через ДОБРО.РФ); сбор корма на месте; пристройство по анкете фонда; R42: Вторая ярмарка пристройства и последний обход площадки перед выходом техники

## Version 7 (saved 2026-10-30)

Note of the change: Two budget variants and Codex's final check applied

Added:

| Task |
| --- |
| R31: Провести исходный онлайн-опрос жителей Восточного административного округа (400 анкет, квота Преображенского и Соколиной Горы) |
| R50: Вариант Б: две фокус-группы с жителями Преображенского и Соколиной Горы — понятны ли сообщения и схема |
| R51: Вариант Б: заказать письменное заключение независимого эксперта по наследию о схеме сохранения; заказчик заранее соглашается опубликовать его целиком |
| R52: Вариант Б: выставка на ограждении площадки: история завода, схема, что сохраняется и что разбирается, ссылка на страницу проекта |
| R43: Согласовать программу двух встреч с жителями района (28.01 Преображенское; 11.02 Соколиная Гора) и макеты приглашений вместе с ответами первой встречи |
| R48: Напечатать 3 000 приглашений на встречу 28.01 и разнести их по почтовым ящикам Преображенского и в районные сообщества |
| R53: Вариант Б: съёмка ролика с москвоведами об описи и сохраняемых элементах |
| R49: Напечатать 3 000 приглашений на встречу 11.02 и разнести их по почтовым ящикам Соколиной Горы и в районные сообщества |
| R54: Вариант Б: обновить выставку на ограждении перед выходом техники |
| R55: Вариант Б: две фокус-группы перед итоговым опросом |
| R56: Вариант Б: напечатать и разнести приглашения на встречу с жителями 04.03 перед выходом техники |
| R57: Вариант Б: встреча с жителями 04.03: что будет, когда выйдет техника, график работ и куда обращаться |

Removed: R31: Провести исходный онлайн-опрос жителей ВАО (400 анкет, квота Преображенского и Соколиной Горы); R43: Согласовать программу двух встреч с жителями района (28.01 Преображенское; 11.02 Соколиная Гора) и разнести приглашения по почтовым ящикам и в районные сообщества
